# WBS.xml

Schedule from MS Project XML, 2018-02-22 to 2019-06-30, 6 hours a day, costs in IRR, A marks actual dates.

## Calendars

- Standard: Mon-Sun 09:00-12:00, 14:00-17:00. Exceptions (off unless hours are given): 2018-03-11 to 2018-03-24 (New year rest), 2018-04-14 to 2018-04-21 (ACM), 2018-04-22 09:00-12:00, 14:00-17:00, 2018-04-23 08:00-12:00, 13:00-17:00, 2018-04-28 08:00-12:00, 13:00-17:00.

## Resources

| Resource | Rate |
| --- | --- |
| امیرکیوان محتشمی | 613000 |
| پیمان جبارزاده گنجه | 550000 |

## Schedule

| ID | WBS | Task | Type | Duration | Start | Finish | Predecessors | Complete | Constraint | Resources | Work | Actual work | Cost | Actual cost |
| --- | --- | --- | --- | --- | --- | --- | --- | --- | --- | --- | --- | --- | --- | --- |
| 1 | 1 | **فاز اول پروژه** |  | 11.33d | 2018-02-22 09:00 A | 2018-03-05 11:00 A |  | 100% |  |  | 22.68h | 22.68h | 13,203,625 | 13,203,625 |
| 2 | 1.1 | **تهیه پروپوزال** |  | 11.17d | 2018-02-22 09:00 A | 2018-03-05 10:00 A |  | 100% |  |  | 22.02h | 22.02h | 12,846,125 | 12,846,125 |
| 3 | 1.1.1 | اهداف و توجیه |  | 2h | 2018-03-04 09:00 A | 2018-03-04 11:00 A |  | 100% | start no earlier than 2018-03-04 08:00 | پیمان جبارزاده گنجه [65%] | 1.3h | 1.3h | 715,000 | 715,000 |
| 4 | 1.1.2 | معرفی و مفاد قرارداد |  | 3h | 2018-03-04 09:00 A | 2018-03-04 12:00 A |  | 100% | start no earlier than 2018-03-04 08:00 | امیرکیوان محتشمی [75%] | 2.25h | 2.25h | 1,379,250 | 1,379,250 |
| 5 | 1.1.3 | **معرفی سیستم و توضیح تکنولوژی** |  | 0.67d | 2018-02-27 09:00 A | 2018-02-27 15:00 A |  | 100% |  |  | 4.85h | 4.85h | 2,809,250 | 2,809,250 |
| 6 | 1.1.3.1 | تهیه گزینه راه حل‌های تکنولوژی |  | 4h | 2018-02-27 09:00 A | 2018-02-27 15:00 A |  | 100% | start no earlier than 2018-02-27 08:00 | پیمان جبارزاده گنجه [65%] | 2.6h | 2.6h | 1,430,000 | 1,430,000 |
| 7 | 1.1.3.2 | امکان سنجی گزینه ها |  | 3h | 2018-02-27 09:00 A | 2018-02-27 12:00 A | 6SS | 100% |  | امیرکیوان محتشمی [75%] | 2.25h | 2.25h | 1,379,250 | 1,379,250 |
| 8 | 1.1.3.3 | انتخاب گزینه راه حل نهایی | milestone | 0h | 2018-02-27 15:00 A | 2018-02-27 15:00 A | 7, 6 | 100% |  | امیرکیوان محتشمی [75%] |  |  |  |  |
| 9 | 1.1.4 | **پوشش نیازمندی‌های کارکردی و غیرکارکردی** |  | 0.83d | 2018-02-22 09:00 A | 2018-02-22 16:00 A |  | 100% |  |  | 8.4h | 8.4h | 4,903,500 | 4,903,500 |
| 10 | 1.1.4.1 | نیازمندی‌های کارکردی |  | 5h | 2018-02-22 09:00 A | 2018-02-22 16:00 A |  | 100% | start no earlier than 2018-02-22 08:00 | امیرکیوان محتشمی [75%]; پیمان جبارزاده گنجه [65%] | 7h | 7h | 4,086,250 | 4,086,250 |
| 11 | 1.1.4.2 | نیازمندی‌های غیرکارکردی |  | 1h | 2018-02-22 09:00 A | 2018-02-22 10:00 A |  | 100% | start no earlier than 2018-02-22 08:00 | امیرکیوان محتشمی [75%]; پیمان جبارزاده گنجه [65%] | 1.4h | 1.4h | 817,250 | 817,250 |
| 12 | 1.1.5 | برآورد زمانی |  | 2h | 2018-03-04 09:00 A | 2018-03-04 11:00 A |  | 100% | start no earlier than 2018-03-04 08:00 | امیرکیوان محتشمی [75%] | 1.5h | 1.5h | 919,500 | 919,500 |
| 13 | 1.1.6 | برآوردمالی |  | 4h | 2018-03-04 11:00 A | 2018-03-04 17:00 A | 12 | 100% |  | پیمان جبارزاده گنجه [65%] | 2.6h | 2.6h | 1,430,000 | 1,430,000 |
| 14 | 1.1.7 | مراحل اجرای پروژه |  | 1h | 2018-03-05 09:00 A | 2018-03-05 10:00 A | 12, 13 | 100% |  | امیرکیوان محتشمی [75%] | 0.75h | 0.75h | 459,750 | 459,750 |
| 15 | 1.1.8 | معرفی اعضای گروه | milestone | 0h | 2018-03-04 08:00 A | 2018-03-04 08:00 A |  | 100% | start no earlier than 2018-03-04 08:00 | امیرکیوان محتشمی [75%] |  |  |  |  |
| 16 | 1.1.9 | بیان نمرات اضافی |  | 0.5h | 2018-03-04 09:00 A | 2018-03-04 09:30 A | 15 | 100% |  | امیرکیوان محتشمی [75%] | 0.38h | 0.38h | 229,875 | 229,875 |
| 17 | 1.2 | بازخوانی و تصحیح پروپوزال و آماده سازی نسخه نهایی |  | 1h | 2018-03-05 10:00 A | 2018-03-05 11:00 A | 2 | 100% |  | پیمان جبارزاده گنجه [65%] | 0.65h | 0.65h | 357,500 | 357,500 |
| 18 | 1.3 | ارسال نسخه نهایی | milestone | 0d | 2018-03-05 11:00 A | 2018-03-05 11:00 A | 17 | 100% |  | پیمان جبارزاده گنجه [65%] |  |  |  |  |
| 19 | 2 | **فاز دوم پروژه** |  | 0.25d | 2018-03-10 08:00 A | 2018-03-10 10:30 A | 1 | 100% |  |  | 5.6h | 5.6h | 3,269,000 | 3,269,000 |
| 20 | 2.1 | **تهیه ساختار شکست کار اولیه** |  | 0.25d | 2018-03-10 08:00 A | 2018-03-10 10:30 A |  | 100% |  |  | 5.6h | 5.6h | 3,269,000 | 3,269,000 |
| 21 | 2.1.1 | فاز اول |  | 1.5h | 2018-03-10 09:00 A | 2018-03-10 10:30 A |  | 100% | start no earlier than 2018-03-10 08:00 | امیرکیوان محتشمی [75%]; پیمان جبارزاده گنجه [65%] | 2.1h | 2.1h | 1,225,875 | 1,225,875 |
| 22 | 2.1.2 | فاز دوم | milestone | 0h | 2018-03-10 08:00 A | 2018-03-10 08:00 A |  | 100% | start no earlier than 2018-03-10 08:00 | پیمان جبارزاده گنجه [65%]; امیرکیوان محتشمی [75%] |  |  |  |  |
| 23 | 2.1.3 | فاز سوم |  | 1.5h | 2018-03-10 09:00 A | 2018-03-10 10:30 A |  | 100% | start no earlier than 2018-03-10 08:00 | امیرکیوان محتشمی [75%] | 1.12h | 1.12h | 689,625 | 689,625 |
| 24 | 2.1.4 | فاز چهارم |  | 1.5h | 2018-03-10 09:00 A | 2018-03-10 10:30 A |  | 100% | start no earlier than 2018-03-10 08:00 | پیمان جبارزاده گنجه [65%] | 0.97h | 0.97h | 536,250 | 536,250 |
| 25 | 2.1.5 | فاز پنجم |  | 1h | 2018-03-10 09:00 A | 2018-03-10 10:00 A |  | 100% | start no earlier than 2018-03-10 08:00 | امیرکیوان محتشمی [75%]; پیمان جبارزاده گنجه [65%] | 1.4h | 1.4h | 817,250 | 817,250 |
| 26 | 2.2 | ارسال نسخه اولیه | milestone | 0d | 2018-03-10 10:30 A | 2018-03-10 10:30 A | 20 | 100% |  | پیمان جبارزاده گنجه [65%] |  |  |  |  |

| ID | WBS | Task | Type | Duration | Start | Finish | Predecessors | Complete | Remaining | Total slack | Constraint | Resources | Work | Actual work | Cost | Actual cost |
| --- | --- | --- | --- | --- | --- | --- | --- | --- | --- | --- | --- | --- | --- | --- | --- | --- |
| 27 | 3 | **فاز سوم پروژه** |  | 3.33d | 2018-04-25 09:00 A | 2018-04-30 17:00 A | 19 | 100% |  |  |  |  | 16.8h | 16.8h | 9,807,000 | 9,807,000 |
| 28 | 3.1 | **موارد کاربری و سناریوهای تست مرتبط با ثبت‌نام کاربران** |  | 2d | 2018-04-25 09:00 A | 2018-04-26 17:00 A |  | 100% |  |  |  |  | 8.4h | 8.4h | 4,903,500 | 4,903,500 |
| 29 | 3.1.1 | موارد کاربری ثبت‌نام کاربران |  | 1d | 2018-04-25 09:00 A | 2018-04-25 17:00 A |  | 100% |  |  | start no earlier than 2018-04-25 08:00 | پیمان جبارزاده گنجه [65%] | 3.9h | 3.9h | 2,145,000 | 2,145,000 |
| 30 | 3.1.2 | سناریوهای تست ثبت‌نام کاربران |  | 1d | 2018-04-26 09:00 A | 2018-04-26 17:00 A | 29 | 100% |  |  |  | امیرکیوان محتشمی [75%] | 4.5h | 4.5h | 2,758,500 | 2,758,500 |
| 31 | 3.2 | **موارد کاربری و سناریوهای مرتبط با ارتباط با مدیر** |  | 2d | 2018-04-25 09:00 A | 2018-04-26 17:00 A |  | 100% |  |  |  |  | 8.4h | 8.4h | 4,903,500 | 4,903,500 |
| 32 | 3.2.1 | موارد کاربری ارتباط با مدیر |  | 1d | 2018-04-25 09:00 A | 2018-04-25 17:00 A |  | 100% |  |  | start no earlier than 2018-04-25 08:00 | امیرکیوان محتشمی [75%] | 4.5h | 4.5h | 2,758,500 | 2,758,500 |
| 33 | 3.2.2 | سناریوهای تست ارتباط با مدیر |  | 1d | 2018-04-26 09:00 A | 2018-04-26 17:00 A | 32 | 100% |  |  |  | پیمان جبارزاده گنجه [65%] | 3.9h | 3.9h | 2,145,000 | 2,145,000 |
| 34 | 3.3 | ارسال نسخه نهایی | milestone | 0d | 2018-04-30 17:00 A | 2018-04-30 17:00 A |  | 100% |  |  | finish no earlier than 2018-04-30 17:00 | پیمان جبارزاده گنجه [65%]; امیرکیوان محتشمی [75%] |  |  |  |  |
| 35 | 4 | **فاز چهارم پروژه** |  | 36.17d | 2018-04-23 08:00 A | 2018-06-18 12:00 | 27 | 99% | 0d | 377.5d |  |  | 50.4h | 50.4h | 29,421,000 | 29,421,000 |
| 36 | 4.1 | **موارد کاربری و سناریوهای تست کیف پول** |  | 35.67d | 2018-04-23 08:00 A | 2018-06-17 17:00 A |  | 100% |  |  |  |  | 16.8h | 16.8h | 9,807,000 | 9,807,000 |
| 37 | 4.1.1 | موارد کاربری مربوط به مبادلات ارزی |  | 1d | 2018-04-23 08:00 A | 2018-04-23 15:00 A |  | 100% |  |  | start no earlier than 2018-04-23 08:00 | پیمان جبارزاده گنجه [65%] | 3.9h | 3.9h | 2,145,000 | 2,145,000 |
| 38 | 4.1.2 | سناریوهای تست مربوط به مبادلات ارزی |  | 1d | 2018-06-17 08:00 A | 2018-06-17 17:00 A | 37 | 100% |  |  | start no earlier than 2018-04-28 08:00 | پیمان جبارزاده گنجه [65%] | 3.9h | 3.9h | 2,145,000 | 2,145,000 |
| 39 | 4.1.3 | موارد کاربری مربوط به شارژ ریالی |  | 1d | 2018-04-23 08:00 A | 2018-04-23 15:00 A |  | 100% |  |  | start no earlier than 2018-04-23 08:00 | امیرکیوان محتشمی [75%] | 4.5h | 4.5h | 2,758,500 | 2,758,500 |
| 40 | 4.1.4 | سناریوهای تست مربوط به شارژ ریالی |  | 1d | 2018-04-28 08:00 A | 2018-04-28 15:00 A | 39 | 100% |  |  | start no earlier than 2018-04-28 08:00 | امیرکیوان محتشمی [75%] | 4.5h | 4.5h | 2,758,500 | 2,758,500 |
| 41 | 4.2 | **موارد کاربری و سناریوهای تست مرتبط با تعریف و پیگیری درخواست** |  | 2d | 2018-05-09 08:00 A | 2018-05-10 17:00 A |  | 100% |  |  |  |  | 16.8h | 16.8h | 9,807,000 | 9,807,000 |
| 42 | 4.2.1 | موارد کاربری مربوط به ثبت درخواست |  | 0.5d | 2018-05-09 09:00 A | 2018-05-09 12:00 A |  | 100% |  |  | start no earlier than 2018-05-09 08:00 | امیرکیوان محتشمی [75%] | 2.25h | 2.25h | 1,379,250 | 1,379,250 |
| 43 | 4.2.2 | سناریوهای تست مربوط به ثبت درخواست |  | 0.5d | 2018-05-10 09:00 A | 2018-05-10 12:00 A | 42 | 100% |  |  |  | امیرکیوان محتشمی [75%] | 2.25h | 2.25h | 1,379,250 | 1,379,250 |
| 44 | 4.2.3 | موارد کاربری تعریف درخواست |  | 0.5d | 2018-05-09 09:00 A | 2018-05-09 12:00 A |  | 100% |  |  | start no earlier than 2018-05-09 08:00 | امیرکیوان محتشمی [75%] | 2.25h | 2.25h | 1,379,250 | 1,379,250 |
| 45 | 4.2.4 | سناریوهای تست تعریف درخواست |  | 0.5d | 2018-05-10 09:00 A | 2018-05-10 12:00 A | 44 | 100% |  |  | start no earlier than 2018-05-03 08:00 | امیرکیوان محتشمی [75%] | 2.25h | 2.25h | 1,379,250 | 1,379,250 |
| 46 | 4.2.5 | موارد کاربری پیگیری درخواست |  | 1d | 2018-05-09 08:00 A | 2018-05-09 17:00 A |  | 100% |  |  | start no earlier than 2018-05-16 08:00 | پیمان جبارزاده گنجه [65%] | 3.9h | 3.9h | 2,145,000 | 2,145,000 |
| 47 | 4.2.6 | سناریوهای تست پیگیری درخواست |  | 1d | 2018-05-10 08:00 A | 2018-05-10 17:00 A | 46 | 100% |  |  | start no earlier than 2018-05-10 08:00 | پیمان جبارزاده گنجه [65%] | 3.9h | 3.9h | 2,145,000 | 2,145,000 |
| 48 | 4.3 | **موارد کاربری و سناریوهای تست مرتبط با حساب شرکت** |  | 17.5d | 2018-06-01 09:00 A | 2018-06-18 12:00 A |  | 100% |  |  |  |  | 3.9h | 3.9h | 2,145,000 | 2,145,000 |
| 49 | 4.3.1 | موارد کاربری حساب شرکت |  | 0.5d | 2018-06-01 09:00 A | 2018-06-01 12:00 A |  | 100% |  |  | start no earlier than 2018-06-01 08:00 | پیمان جبارزاده گنجه [65%] | 1.95h | 1.95h | 1,072,500 | 1,072,500 |
| 50 | 4.3.2 | سناریوهای تست حساب شرکت |  | 0.5d | 2018-06-18 09:00 A | 2018-06-18 12:00 A | 49 | 100% |  |  | start no earlier than 2018-06-18 08:00 | پیمان جبارزاده گنجه [65%] | 1.95h | 1.95h | 1,072,500 | 1,072,500 |

| ID | WBS | Task | Type | Duration | Start | Finish | Predecessors | Complete | Remaining | Total slack | Constraint | Resources | Work | Actual work | Cost | Actual cost |
| --- | --- | --- | --- | --- | --- | --- | --- | --- | --- | --- | --- | --- | --- | --- | --- | --- |
| 51 | 4.4 | **موارد کاربری و سناریوهای تست مرتبط با اطلاع‌رسانی و صفحات ایستا** |  | 12.25d | 2018-05-26 08:00 A | 2018-06-07 10:30 A |  | 100% |  |  |  |  | 5.62h | 5.62h | 3,448,125 | 3,448,125 |
| 52 | 4.4.1 | موارد کابری صفحات ایستا |  | 0.5d | 2018-05-26 08:00 A | 2018-05-26 12:00 A |  | 100% |  |  | start no earlier than 2018-05-23 08:00 | امیرکیوان محتشمی [75%] | 2.25h | 2.25h | 1,379,250 | 1,379,250 |
| 53 | 4.4.2 | موارد کاربری اطلاع رسانی |  | 0.5d | 2018-05-26 08:00 A | 2018-05-26 12:00 A |  | 100% |  |  | start no earlier than 2018-05-23 08:00 | امیرکیوان محتشمی [75%] | 2.25h | 2.25h | 1,379,250 | 1,379,250 |
| 54 | 4.4.3 | سناریوهای تست اطلاع رسانی |  | 0.25d | 2018-06-07 09:00 A | 2018-06-07 10:30 A | 53 | 100% |  |  | start no earlier than 2018-06-07 08:00 | امیرکیوان محتشمی [75%] | 1.12h | 1.12h | 689,625 | 689,625 |
| 55 | 4.5 | **موارد کاربری و سناریوهای تست مرتبط با کاربران** |  | 17.5d | 2018-06-01 09:00 A | 2018-06-18 12:00 A |  | 100% |  |  |  |  | 7.28h | 7.28h | 4,213,875 | 4,213,875 |
| 56 | 4.5.1 | موارد کاربری تغییر پروفایل |  | 0.5d | 2018-06-01 09:00 A | 2018-06-01 12:00 A |  | 100% |  |  | start no earlier than 2018-06-01 08:00 | پیمان جبارزاده گنجه [65%] | 1.95h | 1.95h | 1,072,500 | 1,072,500 |
| 57 | 4.5.2 | سناریوهای تست تغییر پروفایل |  | 0.5d | 2018-06-18 09:00 A | 2018-06-18 12:00 A | 56 | 100% |  |  | start no earlier than 2018-06-18 08:00 | پیمان جبارزاده گنجه [65%] | 1.95h | 1.95h | 1,072,500 | 1,072,500 |
| 58 | 4.5.3 | موارد کاربری دسترسی کاربران |  | 0.25d | 2018-06-07 09:00 A | 2018-06-07 10:30 A |  | 100% |  |  | start no earlier than 2018-06-07 08:00 | امیرکیوان محتشمی [75%] | 1.12h | 1.12h | 689,625 | 689,625 |
| 59 | 4.5.4 | سناریوهای تست دسترسی کابران |  | 0.5d | 2018-06-07 09:00 A | 2018-06-07 12:00 A | 58 | 100% |  |  | start no earlier than 2018-06-07 08:00 | امیرکیوان محتشمی [75%] | 2.25h | 2.25h | 1,379,250 | 1,379,250 |
| 60 | 4.6 | ارسال نسخه نهایی | milestone | 0d | 2018-06-18 08:00 | 2018-06-18 08:00 |  |  |  | 378d | start no earlier than 2018-06-18 08:00 | پیمان جبارزاده گنجه [65%]; امیرکیوان محتشمی [75%] |  |  |  |  |
| 61 | 5 | **فاز پنجم پروژه** |  | 391d | 2018-06-05 08:00 A | 2019-06-30 17:00 |  | 38% | 244.38d | 0d |  |  | 100.8h | 38.1h | 58,842,000 | 22,372,500 |
| 62 | 5.1 | **ERD Design** |  | 387.5d | 2018-06-05 08:00 A | 2019-06-27 12:00 A |  | 100% |  |  |  |  | 8.4h | 8.4h | 4,903,500 | 4,903,500 |
| 63 | 5.1.1 | طراحی مدل‌های کاربران |  | 0.5d | 2018-06-05 08:00 A | 2018-06-05 12:00 A |  | 100% |  |  | start no earlier than 2018-06-20 08:00 | امیرکیوان محتشمی [75%] | 2.25h | 2.25h | 1,379,250 | 1,379,250 |
| 64 | 5.1.2 | طراحی مدل‌های مربوط به کیف پول |  | 0.5d | 2018-06-16 08:00 A | 2018-06-16 12:00 A |  | 100% |  |  | start no earlier than 2018-06-20 08:00 | امیرکیوان محتشمی [75%] | 2.25h | 2.25h | 1,379,250 | 1,379,250 |
| 65 | 5.1.3 | طراحی مدل‌های مربوط به درخواست‌ها |  | 0.5d | 2018-06-05 08:00 A | 2018-06-05 12:00 A |  | 100% |  |  | start no earlier than 2018-06-21 08:00 | پیمان جبارزاده گنجه [65%] | 1.95h | 1.95h | 1,072,500 | 1,072,500 |
| 66 | 5.1.4 | طراحی مدل‌های مربوط به اطلاع‌رسانی و سایر امکانات |  | 0.5d | 2019-06-27 08:00 A | 2019-06-27 12:00 A |  | 100% |  |  | start no earlier than 2018-08-10 08:00 | پیمان جبارزاده گنجه [65%] | 1.95h | 1.95h | 1,072,500 | 1,072,500 |
| 67 | 5.2 | **پیاده‌سازی کاربران** |  | 78d | 2018-06-05 09:00 A | 2018-08-21 17:00 |  | 20% | 62.4d | 313d |  |  | 10.05h | 2.25h | 5,669,250 | 1,379,250 |
| 68 | 5.2.1 | ورود و ثبت‌نام کاربران |  | 0.5d | 2018-06-05 09:00 A | 2018-06-05 12:00 A |  | 100% |  |  | start no earlier than 2018-06-05 08:00 | امیرکیوان محتشمی [75%] | 2.25h | 2.25h | 1,379,250 | 1,379,250 |
| 69 | 5.2.2 | مدیریت کاربران |  | 2d | 2018-08-20 09:00 | 2018-08-21 17:00 |  |  |  | 313d | start no earlier than 2018-08-20 08:00 | پیمان جبارزاده گنجه [65%] | 7.8h |  | 4,290,000 |  |
| 70 | 5.3 | **پیاده‌سازی کیف پول و حساب شرکت** |  | 65d | 2018-06-16 09:00 A | 2018-08-19 17:00 A |  | 100% |  |  |  |  | 15.75h | 15.75h | 9,654,750 | 9,654,750 |
| 71 | 5.3.1 | نمایش کیف پول ها |  | 0.5d | 2018-06-16 09:00 A | 2018-06-16 12:00 A |  | 100% |  |  | start no earlier than 2018-06-16 08:00 | امیرکیوان محتشمی [75%] | 2.25h | 2.25h | 1,379,250 | 1,379,250 |
| 72 | 5.3.2 | شارژ ریالی با اتصال به درگاه بانکی |  | 0.5d | 2018-06-17 09:00 A | 2018-06-17 12:00 A |  | 100% |  |  | start no earlier than 2018-06-17 08:00 | امیرکیوان محتشمی [75%] | 2.25h | 2.25h | 1,379,250 | 1,379,250 |
| 73 | 5.3.3 | شارژ ناشناس |  | 0.5d | 2018-06-17 09:00 A | 2018-06-17 12:00 A |  | 100% |  |  | start no earlier than 2018-06-17 08:00 | امیرکیوان محتشمی [75%] | 2.25h | 2.25h | 1,379,250 | 1,379,250 |
| 74 | 5.3.4 | مبادله‌ی ارز |  | 2d | 2018-08-18 09:00 A | 2018-08-19 17:00 A |  | 100% |  |  | start no earlier than 2018-08-18 08:00 | امیرکیوان محتشمی [75%] | 9h | 9h | 5,517,000 | 5,517,000 |

| ID | WBS | Task | Type | Duration | Start | Finish | Predecessors | Complete | Remaining | Total slack | Free slack | Constraint | Resources | Work | Actual work | Cost | Actual cost |
| --- | --- | --- | --- | --- | --- | --- | --- | --- | --- | --- | --- | --- | --- | --- | --- | --- | --- |
| 75 | 5.4 | **پیاده‌سازی درخواست‌ها** |  | 5d | 2018-08-20 09:00 | 2018-08-24 17:00 | 68 |  |  | 310d |  |  |  | 29.7h |  | 17,469,000 |  |
| 76 | 5.4.1 | افزودن و ثبت درخواست |  | 2d | 2018-08-20 09:00 | 2018-08-21 17:00 |  |  |  | 310d | 0d | start no earlier than 2018-08-20 08:00 | امیرکیوان محتشمی [75%] | 9h |  | 5,517,000 |  |
| 77 | 5.4.2 | پیگیری درخواست‌ها |  | 2d | 2018-08-22 09:00 | 2018-08-23 17:00 | 76 |  |  | 310d | 0d | start no earlier than 2018-08-21 08:00 | پیمان جبارزاده گنجه [65%] | 7.8h |  | 4,290,000 |  |
| 78 | 5.4.3 | لغو خودکار درخواست‌ها در صورت رسیدگی نشدن |  | 1d | 2018-08-24 09:00 | 2018-08-24 17:00 | 77 |  |  | 310d |  | start no earlier than 2018-08-21 08:00 | پیمان جبارزاده گنجه [65%] | 3.9h |  | 2,145,000 |  |
| 79 | 5.4.4 | اتصال سیستم ثبت درخواست به کیف پول و حساب شرکت |  | 2d | 2018-08-22 09:00 | 2018-08-23 17:00 |  |  |  | 311d |  | start no earlier than 2018-08-22 08:00 | امیرکیوان محتشمی [75%] | 9h |  | 5,517,000 |  |
| 80 | 5.5 | **پیاده‌سازی اطلاع‌رسانی و سایر امکانات** |  | 310d | 2018-08-25 09:00 A | 2019-06-30 17:00 |  | 50% | 155d | 0d |  |  |  | 23.4h | 11.7h | 12,870,000 | 6,435,000 |
| 81 | 5.5.1 | پیاده‌سازی اطلاع‌رسانی |  | 3d | 2019-06-28 08:00 A | 2019-06-30 17:00 A |  | 100% |  |  |  | start no earlier than 2018-07-30 08:00 | پیمان جبارزاده گنجه [65%] | 11.7h | 11.7h | 6,435,000 | 6,435,000 |
| 82 | 5.5.2 | پیاده‌سازی صفحات ایستا |  | 3d | 2018-08-25 09:00 | 2018-08-27 17:00 |  |  |  | 307d |  | start no earlier than 2018-08-25 08:00 | پیمان جبارزاده گنجه [65%] | 11.7h |  | 6,435,000 |  |
| 83 | 5.6 | تکمیل پیاده‌سازی و تست |  | 3d | 2018-08-24 09:00 | 2018-08-26 17:00 |  |  |  | 308d | 0d | start no earlier than 2018-08-24 08:00 | امیرکیوان محتشمی [75%] | 13.5h |  | 8,275,500 |  |
| 84 | 5.7 | ارسال نسخه نهایی | milestone | 0d | 2018-08-27 08:00 | 2018-08-27 08:00 | 83 |  |  | 308d |  | start no earlier than 2018-08-27 08:00 | پیمان جبارزاده گنجه [65%] |  |  |  |  |
